Schedule from MS Project, 2014-05-12 to 2014-08-18, costs in €.

## Calendars

- Standard: Mon-Fri 08:00-12:00, 13:00-17:00; Sat-Sun off.

## Resources

| Resource | Rate |
| --- | --- |
| Isaac Newton | 66.63 |
| Lisa Simpson | 111 |
| Maurice Moss | 42 |
| Stephen Hawkins | 200 |
| Grace Hopper | 133.7 |

## Schedule

| ID | WBS | Task | Type | Duration | Start | Finish | Predecessors | Total slack | Free slack | Resources | Work | Cost |
| --- | --- | --- | --- | --- | --- | --- | --- | --- | --- | --- | --- | --- |
| 1 | 1 | **Spezifikationsphase** |  | 27.56d? | 2014-05-12 | 2014-06-18 |  | 0d |  |  | 228h | 23,152.08 |
| 2 | 1.1 | **Ist-Analyse** |  | 4d | 2014-05-12 | 2014-05-15 |  | 0d |  |  | 40h | 4,621.6 |
| 3 | 1.1.1 | Stakeholder-Interviews durchführen |  | 4d | 2014-05-12 | 2014-05-15 |  | 0d |  | Lisa Simpson [50%] | 16h | 1,776 |
| 4 | 1.1.2 | Stakeholder-Analyse erstellen |  | 4d | 2014-05-12 | 2014-05-15 | 3SS | 0d |  | Lisa Simpson [50%] | 16h | 1,776 |
| 5 | 1.1.3 | Ist-Anwendungsfall-Analyse erstellen |  | 2d | 2014-05-12 | 2014-05-13 |  | 2d |  | Grace Hopper [50%] | 8h | 1,069.6 |
| 6 | 1.2 | **Soll-Analyse** |  | 7d? | 2014-05-16 | 2014-05-26 | 2 | 0d |  |  | 60h | 4,416 |
| 7 | 1.2.1 | Anforderungsanalyse |  | 6d | 2014-05-19 | 2014-05-26 | 13FF+1d, 8SS | 0d |  | Stephen Hawkins [25%] | 12h | 2,400 |
| 8 | 1.2.2 | Anforderungsworkshop |  | 1d? | 2014-05-16 | 2014-05-16 |  | 0d |  | Maurice Moss | 8h | 336 |
| 9 | 1.2.3 | Anforderungsworkshop "Reservierungen" planen/durchführen |  | 1d? | 2014-05-19 | 2014-05-19 | 8 | 0d |  | Maurice Moss | 8h | 336 |
| 10 | 1.2.4 | Abstimmungsworkshop "Ankunft"planen/durchführen |  | 1d? | 2014-05-20 | 2014-05-20 | 9 | 0d |  | Maurice Moss | 8h | 336 |
| 11 | 1.2.5 | Abstimmungsworkshop "Aufenthalt"planen/durchführen |  | 1d? | 2014-05-21 | 2014-05-21 | 10 | 0d |  | Maurice Moss | 8h | 336 |
| 12 | 1.2.6 | Abstimmungsworkshop "Abreise" planen/durchführen |  | 1d? | 2014-05-22 | 2014-05-22 | 11 | 0d |  | Maurice Moss | 8h | 336 |
| 13 | 1.2.7 | Lastenheft erstellen |  | 1d | 2014-05-23 | 2014-05-23 | 12 | 0d |  | Maurice Moss | 8h | 336 |
| 14 | 1.3 | **Pflichtenheft** |  | 3d? | 2014-05-27 | 2014-05-29 | 6 | 0d |  |  | 44h | 2,873.04 |
| 15 | 1.3.1 | Fachliches Datenmodell erstellen |  | 1d? | 2014-05-27 | 2014-05-27 |  | 1d | 0d | Isaac Newton [50%] | 4h | 266.52 |
| 16 | 1.3.2 | Fachliche Architektur erstellen |  | 1d? | 2014-05-28 | 2014-05-28 | 15 | 1d |  | Isaac Newton [50%] | 4h | 266.52 |
| 17 | 1.3.3 | Geschäftsprozesse modellieren |  | 1d? | 2014-05-27 | 2014-05-27 |  | 1d | 0d | Lisa Simpson | 8h | 888 |
| 18 | 1.3.4 | Anwendungsfälle modellieren |  | 1d? | 2014-05-28 | 2014-05-28 | 17 | 1d |  | Maurice Moss [50%] | 4h | 168 |
| 19 | 1.3.5 | Mockups erstellen |  | 1d? | 2014-05-27 | 2014-05-27 |  | 0d |  | Maurice Moss [50%] | 4h | 168 |
| 20 | 1.3.6 | Mockups mit dem Kunden abstimmen |  | 1d? | 2014-05-28 | 2014-05-28 | 19 | 0d |  | Lisa Simpson [50%] | 4h | 444 |
| 21 | 1.3.7 | Dialoge spezifizieren |  | 1d? | 2014-05-29 | 2014-05-29 | 20 | 0d |  | Maurice Moss | 8h | 336 |
| 22 | 1.3.8 | Fachliche Testfälle definieren |  | 2d | 2014-05-27 | 2014-05-28 |  | 1d |  | Maurice Moss [50%] | 8h | 336 |
| 23 | 1.4 | Aufwandsschätzung durchführen |  | 2d? | 2014-05-30 | 2014-06-02 | 14 | 0d |  | Stephen Hawkins [50%] | 8h | 1,600 |
| 24 | 1.5 | Angebot schreiben |  | 2d | 2014-06-03 | 2014-06-04 | 23 | 0d |  | Stephen Hawkins [50%] | 8h | 1,600 |
| 25 | 1.6 | Meilenstein - Spezifikationsphase abgeschlossen | milestone | 0d | 2014-06-11 | 2014-06-11 | 24FS+5d | 0d |  |  |  |  |
| 26 | 1.7 | Angebotsworkshop mit dem Kunden durchführen |  | 2d? | 2014-06-12 | 2014-06-13 | 25 | 0d |  | Stephen Hawkins [50%] | 8h | 1,600 |
| 27 | 1.8 | Änderungen nach Kundenwünschen durchführen |  | 2d? | 2014-06-16 | 2014-06-17 | 26 | 0d |  | Grace Hopper; Isaac Newton; Lisa Simpson; Maurice Moss; Stephen Hawkins [50%] | 40h | 4,426.64 |
| 28 | 1.9 | Review zur Spezifikationsphase durchführen |  | 0.56d? | 2014-06-18 | 2014-06-18 | 27 | 0d |  | Grace Hopper; Isaac Newton; Lisa Simpson; Maurice Moss; Stephen Hawkins [50%] | 20h | 2,014.8 |

Notes:
- 1: Hochgerechnete Gesamtdauer von ca 10 (98) Tagen und Kosten von ca. 80000€

| ID | WBS | Task | Type | Duration | Start | Finish | Predecessors | Total slack | Resources | Work | Cost |
| --- | --- | --- | --- | --- | --- | --- | --- | --- | --- | --- | --- |
| 29 | 2 | **Entwurfsphase** |  | 20.81d? | 2014-06-18 | 2014-07-17 | 28 | 0d |  | 160h | 17,245.79 |
| 30 | 2.1 | ER-Diagramm |  | 3d | 2014-06-18 | 2014-06-23 |  | 0d | Grace Hopper [66.7%] | 16h | 2,139.2 |
| 31 | 2.2 | Komponentenmodell erstellen |  | 1d? | 2014-06-23 | 2014-06-24 | 30 | 0d | Lisa Simpson [50%] | 4h | 444 |
| 32 | 2.3 | Komponenteninnensichten |  | 2d | 2014-06-24 | 2014-06-26 | 31 | 0d | Lisa Simpson [75%] | 12h | 1,332 |
| 33 | 2.4 | Schnittestellen definieren |  | 1d? | 2014-06-26 | 2014-06-27 | 32 | 0d | Isaac Newton [50%] | 4h | 266.52 |
| 34 | 2.5 | UML-Sequenzdiagramm erstellen |  | 1.5d? | 2014-06-27 | 2014-07-01 | 33 | 0d | Maurice Moss [66.7%] | 8h | 336 |
| 35 | 2.6 | Abnahme vom Chefarchitekten |  | 2d? | 2014-07-01 | 2014-07-03 | 34 | 0d | Stephen Hawkins [50%] | 8h | 1,600 |
| 36 | 2.7 | Korrekturen durchführen |  | 2.75d | 2014-07-03 | 2014-07-07 | 35 | 0d | Grace Hopper [50%]; Isaac Newton [50%]; Lisa Simpson [50%]; Maurice Moss [50%] | 44h | 3,886.63 |
| 37 | 2.8 | Meilenstein - Entwurfsphase abgeschlossen | milestone | 0d | 2014-07-11 | 2014-07-11 | 36FS+4d | 0d |  |  |  |
| 38 | 2.9 | Rücksprache-Workshop mit Kunde |  | 2d | 2014-07-11 | 2014-07-15 | 37 | 0d | Stephen Hawkins [50%] | 8h | 1,600 |
| 39 | 2.10 | Änderungen nach Kundenwünschen durchführen |  | 1d? | 2014-07-15 | 2014-07-16 | 38 | 0d | Grace Hopper; Isaac Newton; Lisa Simpson; Maurice Moss; Stephen Hawkins [50%] | 36h | 3,626.64 |
| 40 | 2.11 | Review zur Entwurfsphase |  | 0.56d? | 2014-07-16 | 2014-07-17 | 39 | 0d | Grace Hopper; Isaac Newton; Lisa Simpson; Maurice Moss; Stephen Hawkins [50%] | 20h | 2,014.8 |
| 41 | 3 | **Implementationsphase** |  | 5d? | 2014-07-17 | 2014-07-24 | 29 | 0d |  |  |  |
| 42 | 3.1 | Tests implementieren |  | 1d? | 2014-07-17 | 2014-07-18 |  | 0d |  |  |  |
| 43 | 3.2 | Kundenkomponente implementieren |  | 1d? | 2014-07-18 | 2014-07-21 | 42 | 20d |  |  |  |
| 44 | 3.3 | Mitarbeiterkomponente implementieren |  | 1d? | 2014-07-18 | 2014-07-21 | 42 | 20d |  |  |  |
| 45 | 3.4 | Reservierungskomponente implementieren |  | 1d? | 2014-07-18 | 2014-07-21 | 42 | 20d |  |  |  |
| 46 | 3.5 | Zimmerkomponente implementieren |  | 1d? | 2014-07-18 | 2014-07-21 | 42 | 20d |  |  |  |
| 47 | 3.6 | Buchhaltungskomponente implementieren |  | 1d? | 2014-07-18 | 2014-07-21 | 42 | 20d |  |  |  |
| 48 | 3.7 | Hotelsystem-Fassade implementieren |  | 1d? | 2014-07-18 | 2014-07-21 | 42 | 0d |  |  |  |
| 49 | 3.8 | Meilenstein - Implementationsphase abgeschlossen | milestone | 0d | 2014-07-21 | 2014-07-21 | 48 | 0d |  |  |  |
| 50 | 3.9 | Rücksprache-Workshop mit Kunde |  | 1d | 2014-07-21 | 2014-07-22 | 49 | 0d |  |  |  |
| 51 | 3.10 | Änderungen nach Kundenwünschen durchführen |  | 1d? | 2014-07-22 | 2014-07-23 | 50 | 0d |  |  |  |
| 52 | 3.11 | Review zur Implementationsphase |  | 1d? | 2014-07-23 | 2014-07-24 | 51 | 0d |  |  |  |

Notes:
- 41: 15% -> ca 15 Tage und 12000€

| ID | WBS | Task | Type | Duration | Start | Finish | Predecessors | Total slack |
| --- | --- | --- | --- | --- | --- | --- | --- | --- |
| 53 | 4 | **Testphase** |  | 17d? | 2014-07-24 | 2014-08-18 | 52 | 0d |
| 54 | 4.1 | Modultests durchführen |  | 1d? | 2014-07-24 | 2014-07-25 |  | 0d |
| 55 | 4.2 | Komponententests durchführen |  | 1d? | 2014-07-25 | 2014-07-28 | 54 | 0d |
| 56 | 4.3 | Integrationstests durchführen |  | 1d? | 2014-07-28 | 2014-07-29 | 55 | 0d |
| 57 | 4.4 | Systemtestsdurchführen |  | 1d? | 2014-07-29 | 2014-07-30 | 56 | 0d |
| 58 | 4.5 | Verbundstests durchführen |  | 1d? | 2014-07-30 | 2014-07-31 | 57 | 0d |
| 59 | 4.6 | Bugs fixen |  | 1d? | 2014-08-07 | 2014-08-08 | 58FS+5d | 0d |
| 60 | 4.7 | Meilenstein - Testphase abgeschlossen | milestone | 0d | 2014-08-08 | 2014-08-08 | 59 | 0d |
| 61 | 4.8 | Rücksprache-Workshop mit Kunde |  | 1d? | 2014-08-08 | 2014-08-11 | 60 | 0d |
| 62 | 4.9 | Akzeptanztests mit dem Kunden machen |  | 1d? | 2014-08-11 | 2014-08-12 | 61 | 0d |
| 63 | 4.10 | Korrekturen durchführen |  | 1d? | 2014-08-12 | 2014-08-13 | 62 | 0d |
| 64 | 4.11 | Abnahmetests durchführen |  | 1d? | 2014-08-13 | 2014-08-14 | 63 | 0d |
| 65 | 4.12 | Abschlussreview durchfüren |  | 1d? | 2014-08-14 | 2014-08-15 | 64 | 0d |
| 66 | 4.13 | Abschlussdokument erstellen |  | 1d? | 2014-08-15 | 2014-08-18 | 65 | 0d |

Notes:
- 53: 35% -> ca 35 Tage und 28000€
